# Centro médico Hipócrates

Schedule from MS Project, 2016-08-31 to 2016-11-24, A marks actual dates.

## Calendars

- Standard: Mon-Fri 09:00-13:00, 15:00-19:00; Sat-Sun off. Exceptions (off unless hours are given): 2016-09-19 (Día de las Glorias del Ejército), 2016-10-10 (Encuentro de Dos Mundos), 2016-10-31 (Día Nacional de las Iglesias Evangélicas y Protestantes), 2016-11-01 (Día de Todos los Santos).

## Resources

| Resource |
| --- |
| Pablo de la Sotta |
| Tomás Muñiz |
| Elías Baeza |
| Gonzalo López |
| Fabián Jaque |

## Schedule

| ID | WBS | Task | Type | Duration | Start | Finish | Predecessors | Complete | Remaining | Baseline start | Baseline finish | Baseline duration | Total slack | Free slack | Resources | Work | Actual work |
| --- | --- | --- | --- | --- | --- | --- | --- | --- | --- | --- | --- | --- | --- | --- | --- | --- | --- |
| 1 | 1 | **Análisis y Planificación** |  | 11d | 2016-08-31 A | 2016-09-14 |  | 75% | 2.75d | 2016-08-31 | 2016-09-14 | 11d | 0d |  |  | 200h | 156h |
| 2 | 1.1 | **Introducción** |  | 7d | 2016-08-31 A | 2016-09-08 A |  | 100% |  | 2016-08-31 | 2016-09-08 | 7d |  |  |  | 136h | 136h |
| 3 | 1.1.1 | Toma de requerimientos |  | 5d | 2016-08-31 A | 2016-09-06 A |  | 100% |  | 2016-08-31 | 2016-09-06 | 5d |  |  | Elías Baeza | 40h | 40h |
| 4 | 1.1.2 | Establecer alcance |  | 5d | 2016-08-31 A | 2016-09-06 A |  | 100% |  | 2016-08-31 | 2016-09-06 | 5d |  |  | Gonzalo López; Fabián Jaque | 56h | 56h |
| 5 | 1.1.3 | Generar ERS |  | 4d | 2016-09-05 A | 2016-09-08 A | 4 | 100% |  | 2016-09-05 | 2016-09-08 | 4d |  |  | Pablo de la Sotta; Tomás Muñiz | 40h | 40h |
| 6 | 1.2 | **Organización** |  | 5d | 2016-09-08 A | 2016-09-14 | 2 | 31% | 3.44d | 2016-09-08 | 2016-09-14 | 5d | 0d |  |  | 64h | 20h |
| 7 | 1.2.1 | Modelado de procesos |  | 5d | 2016-09-08 A | 2016-09-14 |  | 50% | 2.5d | 2016-09-08 | 2016-09-14 | 5d | 0d |  | Pablo de la Sotta | 40h | 20h |
| 8 | 1.2.2 | Estructura organizacional |  | 1d | 2016-09-09 | 2016-09-09 |  |  |  | 2016-09-09 | 2016-09-09 | 1d | 3d |  | Gonzalo López | 8h |  |
| 9 | 1.2.3 | Establecer responsables |  | 1d | 2016-09-09 | 2016-09-09 |  |  |  | 2016-09-09 | 2016-09-09 | 1d | 2d | 0d | Tomás Muñiz | 8h |  |
| 10 | 1.2.4 | Interfaces e interacciones |  | 1d | 2016-09-12 | 2016-09-12 | 9 |  |  | 2016-09-12 | 2016-09-12 | 1d | 2d |  | Tomás Muñiz | 8h |  |
| 11 | 2 | **Gestión** |  | 4d | 2016-09-15 A | 2016-09-21 | 1 | 10% | 3.6d | 2016-09-15 | 2016-09-21 | 4d | 0d |  |  | 72h | 8h |
| 12 | 2.1 | Objetivos y prioridades |  | 2d | 2016-09-15 A | 2016-09-16 |  | 50% | 1d | 2016-09-15 | 2016-09-16 | 2d | 2d |  | Gonzalo López | 16h | 8h |
| 13 | 2.2 | Condiciones asumidas, dependencias y restricciones |  | 1d | 2016-09-15 | 2016-09-15 |  |  |  | 2016-09-15 | 2016-09-15 | 1d | 3d |  |  |  |  |
| 14 | 2.3 | Gestión de riesgos |  | 2d | 2016-09-15 | 2016-09-16 |  |  |  | 2016-09-15 | 2016-09-16 | 2d | 1d | 0d | Fabián Jaque | 16h |  |
| 15 | 2.4 | Mecanismo de control y ajuste |  | 4d | 2016-09-15 | 2016-09-21 |  |  |  | 2016-09-15 | 2016-09-21 | 4d | 0d |  | Pablo de la Sotta | 32h |  |
| 16 | 2.5 | Recursos |  | 1d | 2016-09-20 | 2016-09-20 | 14 |  |  | 2016-09-20 | 2016-09-20 | 1d | 1d |  | Fabián Jaque | 8h |  |
| 17 | 3 | **Recursos Humanos** |  | 2d | 2016-09-22 A | 2016-09-23 | 11 | 38% | 1.25d | 2016-09-22 | 2016-09-23 | 2d | 4d | 0d |  | 36h | 12h |
| 18 | 3.1 | Dependencias |  | 1d | 2016-09-22 | 2016-09-22 |  |  |  | 2016-09-22 | 2016-09-22 | 1d | 5d |  | Tomás Muñiz | 8h |  |
| 19 | 3.2 | Distribución de RRHH |  | 1d | 2016-09-22 | 2016-09-22 |  |  |  | 2016-09-22 | 2016-09-22 | 1d | 5d |  | Fabián Jaque | 8h |  |
| 20 | 3.3 | Cronograma |  | 2d | 2016-09-22 A | 2016-09-23 |  | 75% | 0.5d | 2016-09-22 | 2016-09-23 | 2d | 4d |  | Fabián Jaque; Elías Baeza | 20h | 12h |
| 21 | 4 | Fin iteración 1 | milestone, manual | 0d | 2016-09-25 | 2016-09-25 |  |  |  | 2016-09-25 | 2016-09-25 |  |  |  |  |  |  |
| 22 | 5 | **Diseño** |  | 5d | 2016-09-26 | 2016-09-30 | 17 |  |  | 2016-09-26 | 2016-09-30 | 5d | 4d | 0d |  |  |  |
| 23 | 5.1 | ECU |  | 5d | 2016-09-26 | 2016-09-30 |  |  |  | 2016-09-26 | 2016-09-30 | 5d | 4d |  |  |  |  |
| 24 | 5.2 | Documentación técnica |  | 5d | 2016-09-26 | 2016-09-30 |  |  |  | 2016-09-26 | 2016-09-30 | 5d | 4d |  |  |  |  |
| 25 | 5.3 | Bocetos (Mockups) |  | 3d | 2016-09-26 | 2016-09-28 |  |  |  | 2016-09-26 | 2016-09-28 | 3d | 6d |  |  |  |  |
| 26 | 5.4 | Modelo de clases |  | 3d | 2016-09-26 | 2016-09-28 |  |  |  | 2016-09-26 | 2016-09-28 | 3d | 6d |  |  |  |  |
| 27 | 5.5 | Modelo de datos |  | 2d | 2016-09-26 | 2016-09-27 |  |  |  | 2016-09-26 | 2016-09-27 | 2d | 7d |  |  |  |  |

Notes:
- 21: Se entrega plan de proyecto / ·Introducción / ·Organización del proyecto / ·Proceso de gestión / ·Líneas de trabajo

| ID | WBS | Task | Type | Duration | Start | Finish | Predecessors | Baseline start | Baseline finish | Baseline duration | Total slack | Free slack |
| --- | --- | --- | --- | --- | --- | --- | --- | --- | --- | --- | --- | --- |
| 28 | 6 | **Estructuración** |  | 2d | 2016-09-26 | 2016-09-27 | 17 | 2016-09-26 | 2016-09-27 | 2d | 39d |  |
| 29 | 6.1 | Recopilación de los datos existentes del centro médico |  | 2d | 2016-09-26 | 2016-09-27 |  | 2016-09-26 | 2016-09-27 | 2d | 39d |  |
| 30 | 6.2 | Limpieza de datos no-reutilizables de la clínica |  | 2d | 2016-09-26 | 2016-09-27 |  | 2016-09-26 | 2016-09-27 | 2d | 39d |  |
| 31 | 7 | **Adquisiciones** |  | 2d | 2016-09-26 | 2016-09-27 | 17 | 2016-09-26 | 2016-09-27 | 2d | 39d |  |
| 32 | 7.1 | Adquisición de recursos tecnológicos |  | 1d | 2016-09-26 | 2016-09-26 |  | 2016-09-26 | 2016-09-26 | 1d | 40d |  |
| 33 | 7.2 | Adquisición de recursos físicos |  | 1d | 2016-09-26 | 2016-09-26 |  | 2016-09-26 | 2016-09-26 | 1d | 39d | 0d |
| 34 | 7.3 | Instalación de recursos físicos |  | 1d | 2016-09-27 | 2016-09-27 | 33 | 2016-09-27 | 2016-09-27 | 1d | 39d |  |
| 35 | 8 | **Construcción** |  | 19d | 2016-10-03 | 2016-10-30 | 22 | 2016-10-03 | 2016-10-24 | 15d | 0d |  |
| 36 | 8.1 | **Desarrollo de aplicaciones** |  | 12d | 2016-10-03 | 2016-10-19 |  | 2016-10-03 | 2016-10-19 | 12d | 4d | 0d |
| 37 | 8.1.1 | Desarrollo módulo ingreso de pacientes |  | 2d | 2016-10-03 | 2016-10-04 |  | 2016-10-03 | 2016-10-04 | 2d | 6d | 0d |
| 38 | 8.1.2 | Desarrollo módulo agendamiento de horas |  | 5d | 2016-10-05 | 2016-10-12 | 37 | 2016-10-05 | 2016-10-12 | 5d | 6d | 0d |
| 39 | 8.1.3 | Desarrollo módulo agenda personal |  | 3d | 2016-10-13 | 2016-10-17 | 38 | 2016-10-13 | 2016-10-17 | 3d | 6d |  |
| 40 | 8.1.4 | Desarrollo módulo registro de paciente |  | 2d | 2016-10-03 | 2016-10-04 |  | 2016-10-03 | 2016-10-04 | 2d | 4d | 0d |
| 41 | 8.1.5 | Desarrollo módulo ficha médica |  | 3d | 2016-10-05 | 2016-10-07 | 40 | 2016-10-05 | 2016-10-07 | 3d | 4d | 0d |
| 42 | 8.1.6 | Desarrollo módulo post atención |  | 2d | 2016-10-11 | 2016-10-12 | 41 | 2016-10-11 | 2016-10-12 | 2d | 4d | 0d |
| 43 | 8.1.7 | Desarrollo módulo consultas especialistas |  | 2d | 2016-10-13 | 2016-10-14 | 42 | 2016-10-13 | 2016-10-14 | 2d | 4d | 0d |
| 44 | 8.1.8 | Desarrollo módulo mantenedores |  | 3d | 2016-10-17 | 2016-10-19 | 43 | 2016-10-17 | 2016-10-19 | 3d | 4d |  |
| 45 | 8.1.9 | Desarrollo módulo de cajas |  | 3d | 2016-10-03 | 2016-10-05 |  | 2016-10-03 | 2016-10-05 | 3d | 5d | 0d |
| 46 | 8.1.10 | Desarrollo módulo de anulaciones |  | 3d | 2016-10-06 | 2016-10-11 | 45 | 2016-10-06 | 2016-10-11 | 3d | 5d | 0d |
| 47 | 8.1.11 | Desarrollo módulo pago de honorarios |  | 3d | 2016-10-12 | 2016-10-14 | 46 | 2016-10-12 | 2016-10-14 | 3d | 5d | 0d |
| 48 | 8.1.12 | Desarrollo módulo reporte de ingreso |  | 2d | 2016-10-17 | 2016-10-18 | 47 | 2016-10-17 | 2016-10-18 | 2d | 5d |  |
| 49 | 8.2 | Programación de base de datos |  | 12d | 2016-10-03 | 2016-10-19 |  | 2016-10-03 | 2016-10-19 | 12d | 4d | 0d |
| 50 | 8.3 | Integración de aplicaciones |  | 3d | 2016-10-20 | 2016-10-24 | 36, 49 | 2016-10-20 | 2016-10-24 | 3d | 4d |  |
| 51 | 8.4 | Generación de documentación y planes de prueba |  | 15d | 2016-10-03 | 2016-10-24 |  | 2016-10-03 | 2016-10-24 | 15d | 4d |  |
| 52 | 8.5 | Fin iteración 2 | milestone, manual | 0d | 2016-10-30 | 2016-10-30 |  | 2016-10-30 | 2016-10-30 |  |  |  |

Notes:
- 35: Para esta tarea se considera: / ·3 integrantes trabajando en programación del software / ·1 integrante trabajando en la programación de la base de datos / ·1 integrante trabajando en la documentación / Se tiene una holgura de 5 días antes de comenzar la tarea Testing

| ID | WBS | Task | Type | Duration | Start | Finish | Predecessors | Baseline start | Baseline finish | Baseline duration | Total slack |
| --- | --- | --- | --- | --- | --- | --- | --- | --- | --- | --- | --- |
| 53 | 9 | **Pruebas de calidad** |  | 8d | 2016-11-09 | 2016-11-18 | 35FS+5d | 2016-11-03 | 2016-11-14 | 8d | 0d |
| 54 | 9.1 | Pruebas unitarias |  | 3d | 2016-11-09 | 2016-11-11 |  | 2016-11-03 | 2016-11-07 | 3d | 0d |
| 55 | 9.2 | Pruebas de integración |  | 3d | 2016-11-09 | 2016-11-11 |  | 2016-11-03 | 2016-11-07 | 3d | 0d |
| 56 | 9.3 | Aceptación |  | 1d | 2016-11-14 | 2016-11-14 | 54, 55 | 2016-11-08 | 2016-11-08 | 1d | 0d |
| 57 | 9.4 | Corrección de errores |  | 4d | 2016-11-15 | 2016-11-18 | 56 | 2016-11-09 | 2016-11-14 | 4d | 0d |
| 58 | 10 | **Migración** |  | 2d | 2016-11-21 | 2016-11-22 | 53 | 2016-11-15 | 2016-11-16 | 2d | 1d |
| 59 | 10.1 | **Carga de información** |  | 2d | 2016-11-21 | 2016-11-22 |  | 2016-11-15 | 2016-11-16 | 2d | 1d |
| 60 | 10.1.1 | Registrar datos análogos |  | 2d | 2016-11-21 | 2016-11-22 |  | 2016-11-15 | 2016-11-16 | 2d | 1d |
| 61 | 10.1.2 | Registro de pacientes nuevos |  | 2d | 2016-11-21 | 2016-11-22 |  | 2016-11-15 | 2016-11-16 | 2d | 1d |
| 62 | 11 | **Implantación** |  | 3d | 2016-11-21 | 2016-11-23 | 53, 58 | 2016-11-15 | 2016-11-17 | 3d | 0d |
| 63 | 11.1 | Implementación de sistema en toda la empresa |  | 1d | 2016-11-21 | 2016-11-21 |  | 2016-11-15 | 2016-11-15 | 1d | 2d |
| 64 | 11.2 | Capacitación del personal |  | 1d | 2016-11-21 | 2016-11-21 |  | 2016-11-15 | 2016-11-15 | 1d | 2d |
| 65 | 11.3 | Marcha blanca |  | 3d | 2016-11-21 | 2016-11-23 |  | 2016-11-15 | 2016-11-17 | 3d | 0d |
| 66 | 12 | **Cierre** |  | 1d | 2016-11-24 | 2016-11-24 | 62, 58 | 2016-11-18 | 2016-11-18 | 1d | 0d |
| 67 | 12.1 | Entrega de documentación |  | 1d | 2016-11-24 | 2016-11-24 |  | 2016-11-18 | 2016-11-18 | 1d | 0d |
| 68 | 12.2 | Generar acta de cierre |  | 1d | 2016-11-24 | 2016-11-24 |  | 2016-11-18 | 2016-11-18 | 1d | 0d |
| 69 | 13 | Fin iteración 3 | milestone, manual | 0d | 2016-11-20 | 2016-11-20 |  | 2016-11-20 | 2016-11-20 |  |  |
